# Engineering

Schedule from GanttProject, 2011-01-03 to 2011-08-05.
Gumstix, Inc.

## Calendars

- Project calendar: Mon-Fri working; Sat-Sun off.

## Resources

| Resource | Group |
| --- | --- |
| JAC | product engineer |
| NM | product engineer |
| MSD | electronics |
| GW | electronics |
| SS | kernel |
| IP | product engineer |
| RH | mis engineer |
| WGK |  |
| DR |  |
| GN |  |
| JC |  |
| SLK |  |
| TK | production |
| THK | production |
| DMA |  |
| YeaLin |  |

## Schedule

| ID | WBS | Task | Type | Duration | Start | Finish | Predecessors | Resources |
| --- | --- | --- | --- | --- | --- | --- | --- | --- |
| 1 | 1 | **Computers** |  | 150d | 2011-01-10 | 2011-08-05 |  |  |
| 2 | 1.1 | PR: Waysmall | milestone | 0d | 2011-02-01 | 2011-02-01 | 3 | SLK |
| 3 | 1.2 | **Waysmall computer** |  | 16d | 2011-01-10 | 2011-01-31 |  |  |
| 4 | 1.2.1 | FCC/CE prep |  | 1d | 2011-01-10 | 2011-01-10 |  | MSD [25%] |
| 5 | 1.2.2 | FCC/CE Testing |  | 10d | 2011-01-11 | 2011-01-24 | 4 |  |
| 6 | 1.2.3 | Documentation |  | 10d | 2011-01-11 | 2011-01-24 | 4 |  |
| 7 | 1.2.4 | Press release |  | 5d | 2011-01-25 | 2011-01-31 | 6 | SLK [80%] |
| 8 | 1.3 | **Hummingbird** |  | 31d | 2011-02-14 | 2011-03-28 |  |  |
| 9 | 1.3.1 | PR: Hummingbird | milestone | 0d | 2011-03-28 | 2011-03-28 | 12 | SLK |
| 10 | 1.3.2 | Hummingbird design |  | 5d | 2011-02-14 | 2011-02-18 | 58 | MSD [75%] |
| 11 | 1.3.3 | Hummingbird build |  | 15d | 2011-02-21 | 2011-03-11 | 10 |  |
| 12 | 1.3.4 | Hummingbird test |  | 10d | 2011-03-14 | 2011-03-25 | 11 | NM [20%] |
| 13 | 1.4 | DollPC |  | 20d | 2011-03-21 | 2011-04-15 | 65 | JAC [50%] |
| 14 | 1.5 | Wandroid |  | 20d | 2011-04-18 | 2011-05-13 | 13 | JAC [75%] |
| 15 | 1.6 | Lego |  | 20d | 2011-05-16 | 2011-06-10 | 14 | JAC [80%] |
| 16 | 1.7 | PCBUAV-AeroDroid |  | 20d | 2011-06-13 | 2011-07-08 | 15 | JAC |
| 17 | 1.8 | Hands-free mouse |  | 20d | 2011-07-11 | 2011-08-05 | 16 | JAC [80%] |
| 18 | 2 | **Expansion boards** |  | 124d | 2011-01-10 | 2011-06-30 |  |  |
| 19 | 2.1 | **Phone** |  | 30d | 2011-01-10 | 2011-02-18 |  |  |
| 20 | 2.1.1 | Phone testing |  | 5d | 2011-02-14 | 2011-02-18 | 21FS+10d | NM [40%]; JAC [40%] |
| 21 | 2.1.2 | Relayout |  | 5d | 2011-01-24 | 2011-01-28 | 22 | MSD [50%] |
| 22 | 2.1.3 | Select screen |  | 10d | 2011-01-10 | 2011-01-21 |  |  |
| 23 | 2.2 | PR: M2M Launch | milestone | 0d | 2011-02-21 | 2011-02-21 | 19 | SLK |
| 24 | 2.3 | SecondCam |  | 16d | 2011-05-02 | 2011-05-23 | 25FS+20d | NM [75%] |
| 25 | 2.4 | CaspaPX: test |  | 5d | 2011-01-10 | 2011-01-14 |  | NM [10%] |
| 26 | 2.5 | PR: CaspaPX | milestone | 0d | 2011-01-17 | 2011-01-17 | 25 | SLK |

Notes:
- 3: Tobi + Overo
- 10: as opposed to the SandBox
- 13: 3.5” screen with keyboard for Barbies...
- 14: ”magic wand” format
- 15: lego brick with an overo inside
- 16: SMT manufactured PCB that flies
- 17: gumstix+camera+eye-tracking as HID
- 19: as per Avago specs using LiPol
- 24: Stereo as well as Front/Back implementation
- 25: PCB30070

| ID | WBS | Task | Type | Duration | Start | Finish | Predecessors | Constraint | Resources |
| --- | --- | --- | --- | --- | --- | --- | --- | --- | --- |
| 27 | 2.6 | **7.0” Display** |  | 11d | 2011-01-14 | 2011-01-28 |  |  |  |
| 28 | 2.6.1 | Populate |  | 5d | 2011-01-14 | 2011-01-20 |  |  | WGK [5%] |
| 29 | 2.6.2 | Test |  | 5d | 2011-01-21 | 2011-01-27 | 28 |  | NM [20%] |
| 30 | 2.6.3 | PR: 7.0" Display | milestone | 0d | 2011-01-28 | 2011-01-28 | 29 |  | SLK |
| 31 | 2.7 | BeagleBase spec |  | 3d | 2011-02-25 | 2011-03-01 | 56, 57, 64 |  | WGK [20%] |
| 32 | 2.8 | 12.1” Display |  | 5d | 2011-01-31 | 2011-02-04 | 21 |  | MSD [75%] |
| 33 | 2.9 | 4.3” LVDS |  | 4d | 2011-03-01 | 2011-03-04 | 32 | start no earlier than 2011-03-01 | MSD [75%] |
| 34 | 2.10 | 4.3" LVDS Testing |  | 5d | 2011-03-28 | 2011-04-01 | 33FS+15d |  | NM [50%] |
| 35 | 2.11 | 3.5” LVDS |  | 4d | 2011-04-04 | 2011-04-07 | 34 |  | MSD [75%] |
| 36 | 2.12 | 3.5 LVDS Testing |  | 5d | 2011-04-29 | 2011-05-05 | 35FS+15d |  | NM [50%] |
| 37 | 2.13 | 2.1” Display |  | 4d | 2011-02-17 | 2011-02-22 | 59 |  | MSD [75%] |
| 38 | 2.14 | Projector |  | 20d | 2011-05-06 | 2011-06-02 | 36 | start no earlier than 2011-04-04 | MSD [75%] |
| 39 | 2.15 | eInk |  | 20d | 2011-06-03 | 2011-06-30 | 38 |  | MSD [75%] |
| 40 | 3 | **Robovero line** |  | 84d | 2011-01-10 | 2011-05-05 |  |  |  |
| 41 | 3.1 | **robovero [19]** |  | 25d | 2011-01-10 | 2011-02-11 |  |  |  |
| 42 | 3.1.1 | Architecture |  | 1d | 2011-01-10 | 2011-01-10 |  |  | NM [10%] |
| 43 | 3.1.2 | Layout |  | 3d | 2011-01-11 | 2011-01-13 | 42 |  | MSD [80%] |
| 44 | 3.1.3 | RoboVero [19] Test |  | 5d | 2011-02-04 | 2011-02-10 | 43FS+15d |  | NM [75%] |
| 45 | 3.1.4 | PR: RoboVero | milestone | 0d | 2011-02-11 | 2011-02-11 | 44 |  | SLK |
| 46 | 3.2 | Embedded Dev Tool |  | 10d | 2011-02-07 | 2011-02-18 | 47 |  | NM [75%] |
| 47 | 3.3 | Breadboard |  | 10d | 2011-01-24 | 2011-02-04 | 48, 54 |  | NM [75%] |
| 48 | 3.4 | M3 tools |  | 10d | 2011-01-10 | 2011-01-21 |  |  | NM [50%] |
| 49 | 3.5 | M3 examples |  | 10d | 2011-01-24 | 2011-02-04 | 48 |  | NM [50%] |
| 50 | 3.6 | robovero ][ |  | 7d | 2011-04-27 | 2011-05-05 | 55 |  | NM [75%] |

Notes:
- 27: PCB30070
- 31: Expansion board with beagle functions.
- 32: Chad Gibbs design
- 33: SWVGA
- 35: SWVGA
- 38: Micron
- 46: All-in-one logic analyzer, function generator, scope, multimeter
- 47: RoboVero evolved for breadboarding interface
- 48: M3 toolchain easier to get going and more powerful than Arduino
- 49: Demo projects showing M3 better than 'Arduino' as disposable MPU

| ID | WBS | Task | Type | Duration | Start | Finish | Predecessors | Constraint | Resources |
| --- | --- | --- | --- | --- | --- | --- | --- | --- | --- |
| 51 | 4 | **Expansion modules** |  | 77d | 2011-01-10 | 2011-04-26 |  |  |  |
| 52 | 4.1 | Mic + Speakers |  | 2d | 2011-02-21 | 2011-02-22 | 19 |  | MSD [75%] |
| 53 | 4.2 | GSM |  | 6d | 2011-01-10 | 2011-01-17 |  |  | JAC [40%] |
| 54 | 4.3 | Gyro |  | 4d | 2011-01-10 | 2011-01-13 |  |  | NM [20%] |
| 55 | 4.4 | 802.15.4 |  | 7d | 2011-04-18 | 2011-04-26 | 54 | start no earlier than 2011-04-18 | MSD |
| 56 | 4.5 | AutoMDIX |  | 4d | 2011-02-21 | 2011-02-24 |  |  | MSD [75%] |
| 57 | 4.6 | USB Hub |  | 2d | 2011-01-17 | 2011-01-18 |  |  | MSD [75%] |
| 58 | 4.7 | gigabit interface |  | 5d | 2011-02-07 | 2011-02-11 |  |  | MSD [75%] |
| 59 | 4.8 | RFID |  | 8d | 2011-02-07 | 2011-02-16 | 32 |  | MSD [75%] |
| 60 | 4.9 | RS-485 |  | 4d | 2011-04-13 | 2011-04-18 |  |  | MSD [40%] |
| 61 | 4.10 | CAP Servo |  | 10d | 2011-04-13 | 2011-04-26 | 60SS |  | WGK [50%] |
| 62 | 4.11 | CAN |  | 4d | 2011-02-21 | 2011-02-24 |  |  | MSD [75%] |
| 63 | 5 | **Cases** |  | 79d | 2011-01-14 | 2011-05-04 |  |  |  |
| 64 | 5.1 | Waysmall Case |  | 1d | 2011-02-01 | 2011-02-01 | 3 |  | WGK [10%] |
| 65 | 5.2 | Bezel |  | 20d | 2011-02-21 | 2011-03-18 | 19 |  | YeaLin |
| 66 | 5.3 | Faceplates for roboVero |  | 15d | 2011-01-14 | 2011-02-03 | 43 |  | YeaLin |
| 67 | 5.4 | ThumboCase |  | 14d | 2011-02-04 | 2011-02-23 | 66 |  | YeaLin |
| 68 | 5.5 | PintoCase |  | 30d | 2011-03-24 | 2011-05-04 | 69 |  | YeaLin |
| 69 | 5.6 | Rugged Case |  | 20d | 2011-02-24 | 2011-03-23 | 3, 67 |  | YeaLin |
| 70 | 5.7 | Tubes |  | 20d | 2011-03-24 | 2011-04-20 | 69, 74 |  | YeaLin |
| 71 | 6 | **Robotics** |  | 74d | 2011-01-31 | 2011-05-12 |  |  |  |
| 72 | 6.1 | BiblioBot |  | 39d | 2011-02-21 | 2011-04-14 | 19, 73 |  | NM [60%] |
| 73 | 6.2 | DC Motor array |  | 11d | 2011-01-31 | 2011-02-14 |  |  | NM [50%]; JAC [30%] |
| 74 | 6.3 | Stepper + encoders |  | 20d | 2011-02-21 | 2011-03-18 | 19, 73 |  | NM [80%]; JAC [60%] |
| 75 | 6.4 | PR: StepperMod | milestone | 0d | 2011-03-21 | 2011-03-21 | 74 |  | SLK |
| 76 | 6.5 | Shipbot |  | 20d | 2011-04-15 | 2011-05-12 | 72, 74 |  | NM [75%]; JAC [75%] |

Notes:
- 52: on PCB implementations as per Avago
- 53: As per Avago design
- 54: On roboVero
- 55: zigbee chip and infrastructure
- 56: New connectors for the 9221
- 57: Support for low-speed and full-speed host
- 58: RFID reader
- 59: RFID reader
- 60: Common industrial serial protocol
- 61: Academic project: TBD
- 62: Can bus module
- 64: The Tobi case as currently being developed
- 65: Bezel for the 4.3” displays -- with back if possible
- 66: Faceplates for the Tobi Case: enclose RoboVero, wireless COMS
- 67: small case for Thumbo format using replaceable faceplates
- 68: small case for Pinto format using replaceable faceplates
- 69: rugged version of aluminum waysmall case with good mounting holes
- 70: extruded aluminum tubes for robotic members to enclose boards
- 72: shipBot precursor provides automated drawers for all components
- 74: standardized servo module and driver as easy to use as a Futuba
- 76: pick, move, place anything from biblioBot into labelled packages

| ID | WBS | Task | Type | Duration | Start | Finish | Predecessors | Constraint | Resources |
| --- | --- | --- | --- | --- | --- | --- | --- | --- | --- |
| 77 | 7 | **Software** |  | 41d | 2011-01-10 | 2011-03-07 |  |  |  |
| 78 | 7.1 | PR: Android 2.3 | milestone | 0d | 2011-01-31 | 2011-01-31 | 79 |  | SLK |
| 79 | 7.2 | Android |  | 15d | 2011-01-10 | 2011-01-28 |  |  | JAC [40%] |
| 80 | 7.3 | qemu |  | 10d | 2011-02-07 | 2011-02-18 | 49 |  | NM [40%]; JAC [10%] |
| 81 | 7.4 | PR: Eclipse | milestone | 0d | 2011-02-28 | 2011-02-28 | 82 |  | SLK |
| 82 | 7.5 | Eclipse |  | 15d | 2011-02-07 | 2011-02-25 | 149 |  | JC [80%] |
| 83 | 7.6 | gnome |  | 10d | 2011-01-25 | 2011-02-07 |  |  | NM [25%]; JC [75%] |
| 84 | 7.7 | PR: gnome | milestone | 0d | 2011-02-08 | 2011-02-08 | 83 |  | SLK |
| 85 | 7.8 | ubuntu |  | 10d | 2011-02-21 | 2011-03-04 |  |  | JC [75%]; JAC [25%] |
| 86 | 7.9 | PR: ubuntu | milestone | 0d | 2011-03-07 | 2011-03-07 | 85 |  | SLK |
| 87 | 7.10 | llinaro |  | 10d | 2011-01-31 | 2011-02-11 |  |  | JC [75%]; JAC [25%] |
| 88 | 8 | **osCommerce** |  | 25d | 2011-01-12 | 2011-02-15 |  |  |  |
| 89 | 8.1 | Selector tool |  | 10d | 2011-02-02 | 2011-02-15 | 90 |  | IP [75%] |
| 90 | 8.2 | **modularized marketing** |  | 10d | 2011-01-19 | 2011-02-01 |  |  | IP [25%] |
| 91 | 8.2.1 | osc data standards |  | 10d | 2011-01-19 | 2011-02-01 | 93 |  | IP [25%] |
| 92 | 8.2.2 | keywords: module/webERP |  | 10d | 2011-01-19 | 2011-02-01 | 93 |  | IP [25%] |
| 93 | 8.3 | move to mainline |  | 5d | 2011-01-12 | 2011-01-18 | 116 |  | IP [75%] |
| 94 | 9 | **webERP** |  | 112d | 2011-01-03 | 2011-06-07 |  |  |  |
| 95 | 9.1 | **erpExplorer** |  | 20d | 2011-01-26 | 2011-02-22 |  |  |  |
| 96 | 9.1.1 | workflow spec interface |  | 5d | 2011-02-16 | 2011-02-22 | 88 |  | IP [60%] |
| 97 | 9.1.2 | iPod erp interface |  | 5d | 2011-01-26 | 2011-02-01 |  |  | WGK [40%] |
| 98 | 9.2 | **Dashboard** |  | 59d | 2011-01-17 | 2011-04-07 |  |  |  |
| 99 | 9.2.1 | Customer pipeline |  | 20d | 2011-03-01 | 2011-03-28 |  | start no earlier than 2011-03-01 | IP [60%] |
| 100 | 9.2.2 | Logistics hit list |  | 5d | 2011-02-01 | 2011-02-07 |  |  | WGK [40%] |
| 101 | 9.2.3 | Supplier scorecards |  | 3d | 2011-01-17 | 2011-01-19 | 109SS |  | WGK [40%] |
| 102 | 9.2.4 | Project tracker |  | 5d | 2011-04-01 | 2011-04-07 |  | start no earlier than 2011-04-01 | IP |
| 103 | 9.2.5 | reporting calendar |  | 5d | 2011-02-21 | 2011-02-25 |  |  | IP [10%]; RH [80%] |

Notes:
- 79: For Avago launch
- 80: Simulator: The scope of this needs to be defined
- 82: Common IDE: The scope of this needs to be defined
- 83: Put Steve's gnome onto a microSD
- 89: js widget for osCommerce to guide product selection based on features
- 90: provide for oscommerce module deployment of all marketing tests
- 91: webERP repository of osCommerce product page and tab data
- 92: webERP repository of osCommerce product-page keywords to improve indexing
- 93: deploy on osc 2.3.1
- 95: Reformulate the presentation of webERP into an Explorer format
- 96: redesign workflow from an admin page within the system
- 97: small screen interface heavy on buttons
- 98: show all operations and metrics
- 99: sugar tags relating to next-steps of customer deployments
- 100: report card of delays till order placed
- 101: record of on-time performance and yields
- 102: Track individual projects for milestones and resource accounting

| ID | WBS | Task | Duration | Start | Finish | Predecessors | Constraint | Resources |
| --- | --- | --- | --- | --- | --- | --- | --- | --- |
| 104 | 9.3 | **Expanded features** | 80d | 2011-02-16 | 2011-06-07 |  |  |  |
| 105 | 9.3.1 | returns processing | 20d | 2011-02-16 | 2011-03-15 | 88 |  | DMA [10%]; IP [10%]; RH [70%] |
| 106 | 9.3.2 | Supplier autoupdates by email | 5d | 2011-02-23 | 2011-03-01 | 96 |  | WGK [15%]; IP [40%] |
| 107 | 9.3.3 | Supplier access | 5d | 2011-05-02 | 2011-05-06 | 100SS | start no earlier than 2011-05-02 | IP |
| 108 | 9.3.4 | Customer access | 5d | 2011-06-01 | 2011-06-07 | 107SS | start no earlier than 2011-06-01 | IP |
| 109 | 9.4 | **financial table** | 9d | 2011-01-17 | 2011-01-27 |  |  |  |
| 110 | 9.4.1 | income and accounts | 5d | 2011-01-17 | 2011-01-21 |  |  | WGK [60%] |
| 111 | 9.4.2 | Cash flow forecasting | 2d | 2011-01-19 | 2011-01-20 | 112 |  | WGK [40%] |
| 112 | 9.4.3 | HR records | 2d | 2011-01-17 | 2011-01-18 |  |  | WGK [40%] |
| 113 | 9.4.4 | Bill-pay automation | 5d | 2011-01-21 | 2011-01-27 | 111 |  | WGK [30%] |
| 114 | 9.5 | autotest MIS | 30d | 2011-01-03 | 2011-02-11 |  |  | IP [10%]; RH [90%] |
| 115 | 10 | **Operations** | 18d | 2011-01-10 | 2011-02-02 |  |  |  |
| 116 | 10.1 | staging servers | 2d | 2011-01-10 | 2011-01-11 |  |  | IP [75%] |
| 117 | 10.2 | Flash using StageCoach | 5d | 2011-01-20 | 2011-01-26 | 126SS |  | JAC [40%] |
| 118 | 10.3 | autoTest kernel/rootfs | 10d | 2011-01-20 | 2011-02-02 | 117SS |  | NM [25%] |
| 119 | 10.4 | Add CM | 15d | 2011-01-10 | 2011-01-28 |  |  | WGK [20%] |
| 120 | 11 | **EAGLE** | 18d | 2011-01-17 | 2011-02-09 |  |  |  |
| 121 | 11.1 | Net-naming convention | 5d | 2011-01-20 | 2011-01-26 |  |  | NM [10%]; WGK [10%]; JAC [10%]; MSD [30%] |
| 122 | 11.2 | autorouter | 5d | 2011-01-27 | 2011-02-02 | 121 |  | WGK [10%]; MSD [25%] |
| 123 | 11.3 | Published BOMs | 5d | 2011-01-19 | 2011-01-25 |  |  | WGK [10%] |
| 124 | 11.4 | eagle diff | 2d | 2011-01-19 | 2011-01-20 |  |  | WGK [30%] |
| 125 | 11.5 | copy and paste script by sheet | 3d | 2011-01-17 | 2011-01-19 |  |  | WGK [30%] |
| 126 | 11.6 | export to database | 5d | 2011-01-20 | 2011-01-26 | 116SS, 125 |  | WGK [20%] |
| 127 | 11.7 | 3D:ruby for sketchup | 3d | 2011-01-17 | 2011-01-19 |  |  | WGK [40%] |
| 128 | 11.8 | 3D:javascript for dojo | 3d | 2011-01-20 | 2011-01-24 | 127 |  | WGK [40%] |
| 129 | 11.9 | jsConf | 10d | 2011-01-27 | 2011-02-09 | 126, 128 |  | NM [50%]; WGK [30%] |

Notes:
- 106: email to suppliers requesting auto-return with commitment dates
- 107: allow suppliers to see payment records
- 108: allow volume customers to place orders and track order production
- 109: tabular summary of GL Details
- 111: estimated cash balances by date for subsequent periods
- 112: store employee birthdates and review dates
- 113: create an uploadable file as alternative to checks
- 116: sandbox, development, deployment and production servers and workflow
- 117: Use a StageCoach to flash 7 NAND-COMS at a time
- 118: Use cumulus for regular builds to generate desktop tests for Neil/Justin
- 119: Malaysia? Local?
- 121: name all expansion board signals in a well-defined fashion
- 122: improved autorouter rules for improved speed of layout and overnight runs
- 123: Make it easier for customers to base designs on expansions
- 124: Create a script top publish diffs in eagle netlists between versions
- 126: export Eagle data into a database for weberp, jsConf and selector tool
- 127: export Eagle data into 3D graphics
- 129: js widget for schematic and component positions from a reference table

| ID | WBS | Task | Type | Duration | Start | Finish | Predecessors | Constraint | Resources |
| --- | --- | --- | --- | --- | --- | --- | --- | --- | --- |
| 130 | 12 | **COM Evolutuion** |  | 70d | 2011-01-10 | 2011-04-15 |  |  |  |
| 131 | 12.1 | PoP 1024/0 |  | 10d | 2011-04-04 | 2011-04-15 | 133 | start no earlier than 2011-04-04 | WGK [10%] |
| 132 | 12.2 | PR: Sand Launch | milestone | 0d | 2011-01-24 | 2011-01-24 | 133 |  | SLK |
| 133 | 12.3 | PoP 256/0 |  | 10d | 2011-01-10 | 2011-01-21 | 135SS |  | WGK [5%] |
| 134 | 12.4 | PR: W++ Launch | milestone | 0d | 2011-01-31 | 2011-01-31 | 135 |  | SLK |
| 135 | 12.5 | PoP 512/512 |  | 15d | 2011-01-10 | 2011-01-28 |  |  | WGK [5%] |
| 136 | 12.6 | Overo35xx++ |  | 4d | 2011-01-31 | 2011-02-03 | 135 |  | WGK [10%] |
| 137 | 12.7 | PR: GS37xx | milestone | 0d | 2011-02-15 | 2011-02-15 | 138 |  | SLK |
| 138 | 12.8 | Overo37xx |  | 7d | 2011-02-04 | 2011-02-14 | 136 |  | WGK [10%] |
| 139 | 12.9 | Murata module |  | 10d | 2011-02-15 | 2011-02-28 | 138 |  | WGK [5%]; SS [20%] |
| 140 | 12.10 | OMAP4430/OMAP4440 |  | 26d | 2011-01-10 | 2011-02-14 |  |  | WGK [0.1%] |
| 141 | 13 | **Business units** |  | 94d | 2011-01-10 | 2011-05-19 |  |  |  |
| 142 | 13.1 | Captive product lines |  | 14d | 2011-05-02 | 2011-05-19 | 129 | start no earlier than 2011-05-02 | WGK [50%] |
| 143 | 13.2 | microSD sales |  | 20d | 2011-01-10 | 2011-02-04 |  |  | WGK [10%] |
| 144 | 13.3 | PR: microSD Sales | milestone | 0d | 2011-02-07 | 2011-02-07 | 143 |  | SLK |
| 145 | 13.4 | App Store |  | 20d | 2011-02-16 | 2011-03-15 | 88 |  | NM [20%]; DR [75%]; WGK [10%]; JAC [25%]; IP [20%]; GN [75%] |
| 146 | 13.5 | PR: AppStore | milestone | 0d | 2011-03-16 | 2011-03-16 | 145 |  | SLK |
| 147 | 13.6 | Engineering services |  | 14d | 2011-03-16 | 2011-04-04 | 145 |  | DMA [60%] |
| 148 | 14 | **Server content** |  | 40d | 2011-01-10 | 2011-03-04 |  |  |  |
| 149 | 14.1 | developer center |  | 20d | 2011-01-10 | 2011-02-04 |  |  | DR [80%]; JC [80%]; GN [80%] |
| 150 | 14.2 | PR: DevCenter | milestone | 0d | 2011-02-07 | 2011-02-07 | 149 |  | SLK |
| 151 | 14.3 | Messaging Overview |  | 5d | 2011-01-12 | 2011-01-18 |  |  | WGK [25%] |
| 152 | 14.4 | osCommerce new look |  | 20d | 2011-02-07 | 2011-03-04 | 149 |  | DR [80%]; GN [80%] |

Notes:
- 131: Wave
- 133: Sand
- 135: Water
- 136: PCM, 1V8-OSC, Drop LED
- 138: Launch date depending on availability
- 139: Launch with the 37xx instead of the wi2wi
- 140: Launch
- 142: Private-label products for distribution partners
- 143: Pre-built microSD images for sale on the site
- 145: Downloadable android and ROS modules and images from a gumstix site
- 147: Provide custom engineering to targeted opportunities
